# TaskPlan - ISO Datatype - Option C

How a schedule from MS Project changed from version to version. A marks actual dates.

## Version 1 (saved 2010-03-03)

Note of the change: ISO Datatype April 30 2010 delivery documents

| ID | WBS | Task | Duration | Start | Finish | Predecessors | Total float | Constraint |
| --- | --- | --- | --- | --- | --- | --- | --- | --- |
| 1 | 1 | **ISO Datatype support** | 44d | 2010-03-01 | 2010-04-29 |  | 0d |  |
| 2 |  | Kickoff | 1d | 2010-03-01 | 2010-03-01 |  | 0d | start no earlier than 2010-03-01 |
| 3 | 1.2 | **Implementation** | 33d | 2010-03-02 | 2010-04-15 |  | 0d |  |
| 4 | 1.2.1 | **ISO 21090 Library** | 18d | 2010-03-02 | 2010-03-25 |  | 0d |  |
| 5 |  | Analyze COPPA Localized library | 3d | 2010-03-02 | 2010-03-04 | 2 | 0d |  |
| 6 |  | Analyze COPPA serialization framework | 3d | 2010-03-02 | 2010-03-04 | 2 | 30d |  |
| 7 |  | Analyze COPPA OR Mapping framework | 3d | 2010-03-02 | 2010-03-04 | 2 | 30d |  |
| 8 |  | Implement enhancements in datatype library | 15d | 2010-03-05 | 2010-03-25 | 7 | 15d |  |
| 9 |  | Baseline library code | 0d | 2010-03-25 | 2010-03-25 | 8 | 15d |  |
| 10 | 1.2.2 | **SDK Enhancements** | 25d | 2010-03-05 | 2010-04-08 |  | 0d |  |
| 11 |  | Enhance SDK Java code generator for the ISO data types | 5d | 2010-03-05 | 2010-03-11 | 5 | 25d |  |
| 12 |  | Enhance SDK ORM module for ISO data types | 20d | 2010-03-05 | 2010-04-01 | 5 | 10d |  |
| 13 |  | Enhance SDK query translator for ISO data types | 20d | 2010-03-05 | 2010-04-01 | 5 | 10d |  |
| 14 |  | Enhance SDK service layer to support ISO data types | 20d | 2010-03-05 | 2010-04-01 | 5 | 10d |  |
| 15 |  | Enhance SDK proxy framework for ISO data types | 20d | 2010-03-05 | 2010-04-01 | 5 | 10d |  |
| 16 |  | Enhance BDA scripts for packaging and deployment | 20d | 2010-03-05 | 2010-04-01 | 5 | 0d |  |
| 17 |  | Unit test and defect fix | 5d | 2010-04-02 | 2010-04-08 | 16 | 0d |  |
| 18 |  | Deliver baseline SDK | 0d | 2010-04-08 | 2010-04-08 | 17 | 5d |  |
| 19 | 1.2.3 | **caAdapter Enhancements** | 25d | 2010-03-05 | 2010-04-08 |  | 15d |  |
| 20 |  | Enhance caAdapter to load ISO 21090 information | 5d | 2010-03-05 | 2010-03-11 | 5 | 5d |  |
| 21 |  | Enhance caAdapter Model Mapping Service | 15d | 2010-03-12 | 2010-04-01 | 20 | 5d |  |
| 22 |  | Unit test and defect fix | 5d | 2010-04-02 | 2010-04-08 | 21 | 5d |  |
| 23 |  | Deliver baseline caAdapter | 0d | 2010-04-08 | 2010-04-08 | 22 | 5d |  |
| 24 | 1.2.4 | **caGrid Enhancements** | 25d | 2010-03-05 | 2010-04-08 |  | 0d |  |
| 25 |  | Create Introduce extensions to support ISO 21090 datatypes | 20d | 2010-03-05 | 2010-04-01 | 5 | 0d |  |
| 26 |  | Develop Reference implementation for SDK like system | 20d | 2010-03-05 | 2010-04-01 | 5 | 10d |  |
| 27 |  | Unit test and defect fix | 5d | 2010-04-02 | 2010-04-08 | 25 | 0d |  |
| 28 |  | Deliver baseline caGrid components | 0d | 2010-04-08 | 2010-04-08 | 27 | 0d |  |
| 29 | 1.2.5 | **SDK/caGrid Integration** | 5d | 2010-04-09 | 2010-04-15 |  | 0d |  |
| 30 |  | Integration testing and defect fixing | 5d | 2010-04-09 | 2010-04-15 | 17, 28 | 0d |  |
| 31 |  | Deliver SDK and caGrid alpha version | 0d | 2010-04-15 | 2010-04-15 | 30 | 0d |  |
| 32 | 1.3 | **QA Testing** | 25d | 2010-03-26 | 2010-04-29 |  | 0d |  |
| 33 |  | Prepare test plan | 10d | 2010-03-26 | 2010-04-08 | 9 | 15d |  |
| 34 |  | Execute test cases | 10d | 2010-04-16 | 2010-04-29 | 31 | 0d |  |
| 35 |  | Provide test support | 10d | 2010-04-16 | 2010-04-29 | 31 | 0d |  |
| 36 |  | Deliver SDK, caGrid, caAdapter | 0d | 2010-04-29 | 2010-04-29 | 35 | 0d |  |
| 37 | 1.4 | **User Documentation** | 10d | 2010-04-16 | 2010-04-29 |  | 0d |  |
| 38 |  | Prepare developers guide for service developers with ISO 21090 datatypes | 10d | 2010-04-16 | 2010-04-29 | 31 | 0d |  |
| 39 |  | Prepare user guide | 10d | 2010-04-16 | 2010-04-29 | 31 | 0d |  |
| 40 |  | Prepare installation guide | 10d | 2010-04-16 | 2010-04-29 | 31 | 0d |  |
| 41 |  | Deliver installation and user guide | 0d | 2010-04-29 | 2010-04-29 | 39, 40 | 0d |  |

## Version 2 (saved 2010-03-11)

Note of the change: Added CQL and Restful support with new 5/21 deadline

Last finish 2010-04-29 → 2010-05-21 (+22d).

Added:

| ID | Task | Duration | Start | Finish | Predecessors | Resources |
| --- | --- | --- | --- | --- | --- | --- |
| 30 | Design and implement CQL specification with translator | 30d | 2010-03-09 | 2010-04-19 | 6 | caGrid |
| 32 | Enhance Introduce Data Service creation wizard | 15d | 2010-03-30 | 2010-04-19 | 30FS-15d | caGrid |

Changed:

| ID | Task | Start | Finish | Duration | Total float | Predecessors | Other |
| --- | --- | --- | --- | --- | --- | --- | --- |
| 1 | **ISO Datatype support** |  | 2010-04-29 → 2010-05-21 (+22d) | 44d → 60d |  |  |  |
| 4 | **Implementation** |  | 2010-04-15 → 2010-05-07 (+22d) | 33d → 49d |  |  |  |
| 5 | **ISO 21090 Library** |  | 2010-03-25 → 2010-03-29 (+4d) | 18d → 20d |  |  |  |
| 6 | Analyze COPPA Localized library |  | 2010-03-04 → 2010-03-08 (+4d) | 3d → 5d |  |  |  |
| 7 | Analyze COPPA serialization framework |  | 2010-03-04 → 2010-03-08 (+4d) | 3d → 5d | 30d → 54d |  |  |
| 8 | Analyze COPPA OR Mapping framework |  | 2010-03-04 → 2010-03-08 (+4d) | 3d → 5d | 30d → 29d |  |  |
| 9 | Implement enhancements in datatype library | 2010-03-05 → 2010-03-09 (+4d) | 2010-03-25 → 2010-03-29 (+4d) |  | 15d → 29d |  |  |
| 10 | Baseline library code | 2010-03-25 → 2010-03-29 (+4d) | 2010-03-25 → 2010-03-29 (+4d) |  | 15d → 29d |  |  |
| 12 | **SDK Enhancements** | 2010-03-05 → 2010-03-09 (+4d) | 2010-04-08 → 2010-04-19 (+11d) | 25d → 30d | 0d → 5d |  |  |
| 13 | Enhance SDK Java code generator for the ISO data types | 2010-03-05 → 2010-03-09 (+4d) | 2010-03-11 → 2010-03-15 (+4d) |  | 25d → 49d |  |  |
| 14 | Enhance SDK ORM module for ISO data types | 2010-03-05 → 2010-03-09 (+4d) | 2010-04-01 → 2010-03-22 (-10d) | 20d → 10d | 10d → 44d |  |  |
| 15 | Enhance SDK service layer to support ISO data types | 2010-03-05 → 2010-03-09 (+4d) | 2010-04-01 → 2010-03-29 (-3d) | 20d → 15d | 10d → 5d |  |  |
| 16 | Enhance SDK proxy framework for ISO data types | 2010-03-05 → 2010-03-30 (+25d) | 2010-04-01 → 2010-04-05 (+4d) | 20d → 5d | 10d → 34d | 6 → 15 |  |
| 17 | Enhance SDK RESTful query translator for ISO data types | 2010-03-05 → 2010-03-30 (+25d) | 2010-04-01 → 2010-04-12 (+11d) | 20d → 10d | 10d → 29d | 6 → 15 | was named Enhance SDK query translator for ISO data types |
| 18 | Enhance BDA scripts for packaging and deployment | 2010-03-05 → 2010-03-30 (+25d) | 2010-04-01 → 2010-04-12 (+11d) | 20d → 10d | 0d → 5d | 6 → 6, 15 |  |
| 19 | Unit test and defect fix | 2010-04-02 → 2010-04-13 (+11d) | 2010-04-08 → 2010-04-19 (+11d) |  | 0d → 5d |  |  |
| 20 | Deliver baseline SDK | 2010-04-08 → 2010-04-19 (+11d) | 2010-04-08 → 2010-04-19 (+11d) |  | 5d → 24d |  |  |
| 22 | **caAdapter Enhancements** | 2010-03-05 → 2010-03-09 (+4d) | 2010-04-08 → 2010-04-19 (+11d) | 25d → 30d | 15d → 24d |  |  |
| 23 | Enhance caAdapter to load ISO 21090 information | 2010-03-05 → 2010-03-09 (+4d) | 2010-03-11 → 2010-03-15 (+4d) |  | 5d → 24d |  |  |
| 24 | Enhance caAdapter Model Mapping Service | 2010-03-12 → 2010-03-16 (+4d) | 2010-04-01 → 2010-04-12 (+11d) | 15d → 20d | 5d → 24d |  |  |
| 25 | Unit test and defect fix | 2010-04-02 → 2010-04-13 (+11d) | 2010-04-08 → 2010-04-19 (+11d) |  | 5d → 24d |  |  |
| 26 | Deliver baseline caAdapter | 2010-04-08 → 2010-04-19 (+11d) | 2010-04-08 → 2010-04-19 (+11d) |  | 5d → 24d |  |  |
| 28 | **caGrid Enhancements** | 2010-03-05 → 2010-03-09 (+4d) | 2010-04-08 → 2010-04-26 (+18d) | 25d → 35d |  |  |  |
| 29 | Create Introduce extensions to support ISO 21090 datatypes | 2010-03-05 → 2010-03-09 (+4d) | 2010-04-01 → 2010-04-05 (+4d) |  | 0d → 34d |  |  |
| 31 | Enhance DomainModel generator | 2010-03-05 → 2010-03-09 (+4d) | 2010-04-01 → 2010-04-05 (+4d) |  | 10d → 34d |  | was named Develop Reference implementation for SDK like system |
| 33 | Unit test and defect fix | 2010-04-02 → 2010-04-20 (+18d) | 2010-04-08 → 2010-04-26 (+18d) |  |  | 29 → 32 |  |
| 34 | Deliver baseline caGrid components | 2010-04-08 → 2010-04-26 (+18d) | 2010-04-08 → 2010-04-26 (+18d) |  |  |  |  |
| 36 | **SDK/caGrid Integration** | 2010-04-09 → 2010-04-27 (+18d) | 2010-04-15 → 2010-05-07 (+22d) | 5d → 9d |  |  |  |
| 37 | Integration testing and defect fixing | 2010-04-09 → 2010-04-27 (+18d) | 2010-04-15 → 2010-05-07 (+22d) | 5d → 9d |  |  |  |
| 38 | Deliver SDK and caGrid alpha version | 2010-04-15 → 2010-05-07 (+22d) | 2010-04-15 → 2010-05-07 (+22d) |  |  |  |  |
| 40 | **QA Testing** | 2010-03-26 → 2010-03-30 (+4d) | 2010-04-29 → 2010-05-21 (+22d) | 25d → 39d |  |  |  |
| 41 | Prepare test plan | 2010-03-26 → 2010-03-30 (+4d) | 2010-04-08 → 2010-04-12 (+4d) |  | 15d → 29d |  |  |
| 42 | Execute test cases | 2010-04-16 → 2010-05-10 (+24d) | 2010-04-29 → 2010-05-21 (+22d) |  |  |  |  |
| 43 | Provide test support | 2010-04-16 → 2010-05-10 (+24d) | 2010-04-29 → 2010-05-21 (+22d) |  |  |  |  |
| 44 | Deliver SDK, caGrid, caAdapter | 2010-04-29 → 2010-05-21 (+22d) | 2010-04-29 → 2010-05-21 (+22d) |  |  |  |  |
| 46 | **User Documentation** | 2010-04-16 → 2010-05-10 (+24d) | 2010-04-29 → 2010-05-21 (+22d) |  |  |  |  |
| 47 | Prepare developers guide for service developers with ISO 21090 datatypes | 2010-04-16 → 2010-05-10 (+24d) | 2010-04-29 → 2010-05-21 (+22d) |  |  |  |  |
| 48 | Prepare user guide | 2010-04-16 → 2010-05-10 (+24d) | 2010-04-29 → 2010-05-21 (+22d) |  |  |  |  |
| 49 | Prepare installation guide | 2010-04-16 → 2010-05-10 (+24d) | 2010-04-29 → 2010-05-21 (+22d) |  |  |  |  |
| 50 | Deliver installation and user guide | 2010-04-29 → 2010-05-21 (+22d) | 2010-04-29 → 2010-05-21 (+22d) |  |  |  |  |

## Version 3 (saved 2010-03-19)

Note of the change: updated caGrid tasks ^JE

Last finish 2010-05-21 → 2010-05-14 (-7d).

Added:

| ID | Task | Duration | Start | Finish | Predecessors | Resources |
| --- | --- | --- | --- | --- | --- | --- |
| 29 | Document the short and long term scope of the caGrid efforts | 5d | 2010-03-30 | 2010-04-05 | 10 | caGrid |
| 30 | Create design document for ISO Introduce Extension | 4d | 2010-04-06 | 2010-04-09 | 29 | caGrid |
| 31 | Create Introduce data types extension for adding ISODatatypes to a service | 5d | 2010-04-12 | 2010-04-16 | 30 | caGrid |
| 32 | Create Service Development Process Documentation for ISO datatypes | 2d | 2010-04-19 | 2010-04-20 | 31 | caGrid |
| 33 | Develop UI component for Introduce data types extension for adding ISODatatypes to a service | 2d | 2010-04-21 | 2010-04-22 | 32 | caGrid |
| 34 | Develop developer guide documentation for data type extension | 2d | 2010-04-23 | 2010-04-26 | 33 | caGrid |
| 35 | Review SDK database/usertype approach | 2d | 2010-03-30 | 2010-03-31 | 10 | caGrid |
| 36 | Design CQL to HQL general approach for SDK managed ISO datatypes | 10d | 2010-04-01 | 2010-04-14 | 35 | caGrid |
| 37 | Prototype SDK/caGrid query exchange | 10d | 2010-04-15 | 2010-04-28 | 36 | caGrid |
| 42 | Ivyify retrieval of dependency on common project | 1d | 2010-04-28 | 2010-04-29 | 41 | caGrid |
| 43 | Develop reference service and limited tutorial | 7d | 2010-03-16 | 2010-03-24 | 23 | caGrid |

Changed:

| ID | Task | Start | Finish | Duration | Total float | Predecessors | Other |
| --- | --- | --- | --- | --- | --- | --- | --- |
| 1 | **ISO Datatype support** |  | 2010-05-21 → 2010-05-14 (-7d) | 60d → 55d |  |  |  |
| 4 | **Implementation** |  | 2010-05-07 → 2010-05-03 (-4d) | 49d → 45d |  |  |  |
| 28 | **caGrid Enhancements** | 2010-03-09 → 2010-03-16 (+7d) | 2010-04-26 → 2010-05-03 (+7d) |  | 0d → 9d |  |  |
| 38 | Develop developer guide documentation for data service support | 2010-03-09 → 2010-04-29 (+51d) | 2010-04-05 → 2010-05-03 (+28d) | 20d → 3d | 34d → 9d | 6 → 37 | was named Create Introduce extensions to support ISO 21090 datatypes |
| 39 | Make ISO client libraries available via download (e.g. any specialized data service client libraries, etc) | 2010-03-09 → 2010-04-27 (+49d) | 2010-04-19 → 2010-04-27 (+8d) | 30d → 0.5d | 0d → 11.5d | 6 → 34 | was named Design and implement CQL specification with translator |
| 40 | Upload ISO datatype extension to Introduce Update Site | 2010-03-09 → 2010-04-27 (+49d) | 2010-04-05 → 2010-04-27 (+22d) | 20d → 0.5d | 34d → 11.5d | 6 → 39 | was named Enhance DomainModel generator |
| 41 | Upload ISO datatype data service extension/style to Introduce Update Site | 2010-03-30 → 2010-04-28 (+29d) | 2010-04-19 → 2010-04-28 (+9d) | 15d → 0.5d | 0d → 11.5d | 39FS-15d → 40 | was named Enhance Introduce Data Service creation wizard |
| 44 | Unit test and defect fix | 2010-04-20 → 2010-03-25 (-26d) | 2010-04-26 → 2010-03-31 (-26d) |  | 0d → 13d | 41 → 43 |  |
| 45 | Deliver baseline caGrid components | 2010-04-26 → 2010-03-31 (-26d) | 2010-04-26 → 2010-03-31 (-26d) |  | 0d → 13d |  | resources none → caGrid |
| 47 | **SDK/caGrid Integration** | 2010-04-27 → 2010-04-20 (-7d) | 2010-05-07 → 2010-04-30 (-7d) |  |  |  |  |
| 48 | Integration testing and defect fixing | 2010-04-27 → 2010-04-20 (-7d) | 2010-05-07 → 2010-04-30 (-7d) |  |  |  |  |
| 49 | Deliver SDK and caGrid alpha version | 2010-05-07 → 2010-04-30 (-7d) | 2010-05-07 → 2010-04-30 (-7d) |  |  |  |  |
| 51 | **QA Testing** |  | 2010-05-21 → 2010-05-14 (-7d) | 39d → 34d |  |  |  |
| 53 | Execute test cases | 2010-05-10 → 2010-05-03 (-7d) | 2010-05-21 → 2010-05-14 (-7d) |  |  |  |  |
| 54 | Provide test support | 2010-05-10 → 2010-05-03 (-7d) | 2010-05-21 → 2010-05-14 (-7d) |  |  |  |  |
| 55 | Deliver SDK, caGrid, caAdapter | 2010-05-21 → 2010-05-14 (-7d) | 2010-05-21 → 2010-05-14 (-7d) |  |  |  |  |
| 57 | **User Documentation** | 2010-05-10 → 2010-05-03 (-7d) | 2010-05-21 → 2010-05-14 (-7d) |  |  |  |  |
| 58 | Prepare developers guide for service developers with ISO 21090 datatypes | 2010-05-10 → 2010-05-03 (-7d) | 2010-05-21 → 2010-05-14 (-7d) |  |  |  |  |
| 59 | Prepare user guide | 2010-05-10 → 2010-05-03 (-7d) | 2010-05-21 → 2010-05-14 (-7d) |  |  |  |  |
| 60 | Prepare installation guide | 2010-05-10 → 2010-05-03 (-7d) | 2010-05-21 → 2010-05-14 (-7d) |  |  |  |  |
| 61 | Deliver installation and user guide | 2010-05-21 → 2010-05-14 (-7d) | 2010-05-21 → 2010-05-14 (-7d) |  |  |  |  |

## Version 4 (saved 2010-03-25)

Note of the change: SVN-Revision: 104

Last finish 2010-05-14 → 2010-05-20 (+6d). Complete tasks 0 → 6.

Added:

| ID | Task | Duration | Start | Finish | Predecessors | Resources |
| --- | --- | --- | --- | --- | --- | --- |
| 11 | Document short term and long term goals for the SDK | 10d | 2010-02-18 A | 2010-03-03 A |  | SDK |
| 12 | Create design document for tag value specification | 10d | 2010-03-09 A | 2010-03-22 | 7 | SDK |
| 13 | Create design document for Hibernate mapping | 15d | 2010-03-09 A | 2010-03-29 | 7 | SDK |
| 14 | Develop JAXB based serialization framework | 15d | 2010-03-09 A | 2010-03-29 | 7 | SDK |
| 15 | Create Test UML model | 5d | 2010-03-23 A | 2010-03-29 | 12 | SDK |
| 19 | Integrate ISO 21090 library in JAXB serialization | 8d | 2010-03-30 | 2010-04-08 | 18, 14 | SDK |
| 26 | Document the short and long term scope of the caAdapter efforts | 5d | 2010-03-02 A | 2010-03-08 A | 2 | caAdapter |
| 28 | Create template model | 5d | 2010-03-16 A | 2010-03-22 | 26 | caAdapter |

Removed: 38 Develop developer guide documentation for data service support

Changed:

| ID | Task | Start | Finish | Duration | Complete | Total float | Predecessors | Other |
| --- | --- | --- | --- | --- | --- | --- | --- | --- |
| 1 | **ISO Datatype support** | 2010-03-01 → 2010-02-18 A (-11d) | 2010-05-14 → 2010-05-20 (+6d) | 55d → 65.5d | 0% → 33% |  |  |  |
| 3 | **Implementation** | 2010-03-02 → 2010-02-18 A (-12d) | 2010-05-03 → 2010-05-06 (+3d) | 45d → 55.5d | 0% → 44% | 0d → 10d |  |  |
| 4 | **ISO 21090 Library** | 2010-03-02 A |  |  | 0% → 50% | 0d → 1d |  |  |
| 5 | Analyze COPPA Localized library | 2010-03-02 A | 2010-03-08 A |  | 0% → 100% | 0d → none |  |  |
| 6 | Analyze COPPA serialization framework | 2010-03-02 A | 2010-03-08 A |  | 0% → 100% | 49d → none |  |  |
| 7 | Analyze COPPA OR Mapping framework | 2010-03-02 A | 2010-03-08 A |  | 0% → 100% | 9d → none |  |  |
| 10 | **SDK Enhancements** | 2010-03-09 → 2010-02-18 A (-19d) |  | 30d → 43d | 0% → 49% | 0d → 22.5d |  |  |
| 16 | Enhance SDK Java code generator for the ISO data types | 2010-03-09 → 2010-03-23 A (+14d) | 2010-03-15 → 2010-03-29 (+14d) |  | 0% → 80% | 44d → 37.5d | 5 → 13FS-5d |  |
| 17 | Enhance SDK ORM module for ISO data types | 2010-03-09 → 2010-03-23 (+14d) | 2010-03-22 → 2010-04-05 (+14d) |  |  | 39d → 32.5d | 5 → 13FS-5d |  |
| 18 | Enhance SDK service layer to support ISO data types | 2010-03-09 A |  |  | 0% → 50% | 0d → 3.5d |  |  |
| 20 | Enhance SDK proxy framework for ISO data types | 2010-03-30 → 2010-04-09 (+10d) | 2010-04-05 → 2010-04-15 (+10d) |  |  | 29d → 24.5d | 18 → 19 |  |
| 25 | **caAdapter Enhancements** | 2010-03-09 → 2010-03-02 A (-7d) |  | 30d → 35d | 0% → 43% | 13d → 22.5d |  |  |
| 27 | Enhance caAdapter to load ISO 21090 information | 2010-03-09 A | 2010-03-15 → 2010-03-22 (+7d) | 5d → 10d | 0% → 80% | 13d → 42.5d | 5 → 26 | resources none → caAdapter |
| 29 | Enhance caAdapter Model Mapping Service | 2010-03-16 → 2010-03-23 (+7d) |  | 20d → 15d |  | 19d → 22.5d | 27 → 28 |  |
| 32 | **caGrid Enhancements** | 2010-03-16 → 2010-03-02 A (-14d) | 2010-05-03 → 2010-04-23 (-10d) | 35d → 38.5d | 0% → 35% | 9d → 19d |  |  |
| 33 | Document the short and long term scope of the caGrid efforts | 2010-03-30 → 2010-03-02 A (-28d) | 2010-04-05 → 2010-03-08 A (-28d) |  | 0% → 100% | 11.5d → none | 9 → 2 |  |
| 34 | Create design document for ISO Introduce Extension | 2010-04-06 → 2010-03-09 A (-28d) | 2010-04-09 → 2010-03-12 (-28d) |  | 0% → 80% | 11.5d → 44.9d |  |  |
| 35 | Create Introduce data types extension for adding ISODatatypes to a service | 2010-04-12 → 2010-03-15 A (-28d) | 2010-04-16 → 2010-03-19 (-28d) |  | 0% → 60% | 11.5d → 41.9d |  |  |
| 36 | Create Service Development Process Documentation for ISO datatypes | 2010-04-19 → 2010-03-22 A (-28d) | 2010-04-20 → 2010-03-23 (-28d) |  | 0% → 60% | 11.5d → 40.7d |  |  |
| 37 | Develop UI component for Introduce data types extension for adding ISODatatypes to a service | 2010-04-21 → 2010-03-24 A (-28d) | 2010-04-22 → 2010-03-25 (-28d) |  | 0% → 60% | 11.5d → 39.5d |  |  |
| 38 | Review SDK database/usertype approach | 2010-03-30 A |  |  | 0% → 50% | 9d → 0d |  |  |
| 39 | Prototype SDK/caGrid query exchange | 2010-04-15 → 2010-04-01 (-14d) | 2010-04-28 → 2010-04-14 (-14d) |  |  | 9d → 0d | 40 → 38 |  |
| 40 | Design CQL to HQL general approach for SDK managed ISO datatypes | 2010-04-01 A |  |  | 0% → 20% | 9d → 25.5d |  |  |
| 41 | Make ISO client libraries available via download (e.g. any specialized data service client libraries, etc) | 2010-04-27 → 2010-04-15 (-12d) | 2010-04-27 → 2010-04-15 (-12d) |  |  | 11.5d → 0d | 57 → 39 |  |
| 42 | Upload ISO datatype extension to Introduce Update Site | 2010-04-27 → 2010-04-15 (-12d) | 2010-04-27 → 2010-04-15 (-12d) |  |  | 11.5d → 0d |  |  |
| 43 | Upload ISO datatype data service extension/style to Introduce Update Site | 2010-04-28 → 2010-04-16 (-12d) | 2010-04-28 → 2010-04-16 (-12d) |  |  | 11.5d → 0d |  |  |
| 44 | Ivyify retrieval of dependency on common project | 2010-04-28 → 2010-04-16 (-12d) | 2010-04-29 → 2010-04-19 (-10d) |  |  | 11.5d → 23d |  |  |
| 45 | Unit test and defect fix | 2010-03-25 → 2010-04-16 (+22d) | 2010-03-31 → 2010-04-23 (+23d) |  |  | 13d → 0d | 56 → 43 |  |
| 46 | Deliver baseline caGrid components | 2010-03-31 → 2010-04-23 (+23d) | 2010-03-31 → 2010-04-23 (+23d) |  |  | 13d → 0d |  |  |
| 47 | Deliver SDK and caGrid alpha version | 2010-04-30 → 2010-05-06 (+6d) | 2010-04-30 → 2010-05-06 (+6d) |  |  |  |  |  |
| 48 | Integration testing and defect fixing | 2010-04-20 → 2010-04-23 (+3d) | 2010-04-30 → 2010-05-06 (+6d) |  |  |  |  |  |
| 49 | SDK/caGrid Integration | 2010-04-20 → 2010-04-23 (+3d) | 2010-04-30 → 2010-05-06 (+6d) |  |  |  |  |  |
| 51 | **QA Testing** |  | 2010-05-14 → 2010-05-20 (+6d) | 34d → 37.5d |  |  |  |  |
| 52 | Execute test cases | 2010-05-03 → 2010-05-06 (+3d) | 2010-05-14 → 2010-05-20 (+6d) |  |  |  |  |  |
| 53 | Deliver SDK, caGrid, caAdapter | 2010-05-14 → 2010-05-20 (+6d) | 2010-05-14 → 2010-05-20 (+6d) |  |  |  |  |  |
| 54 | Provide test support | 2010-05-03 → 2010-05-06 (+3d) | 2010-05-14 → 2010-05-20 (+6d) |  |  |  |  |  |
| 55 | **User Documentation** | 2010-05-03 → 2010-05-06 (+3d) | 2010-05-14 → 2010-05-20 (+6d) |  |  |  |  |  |
| 56 | Develop reference service and limited tutorial | 2010-03-16 → 2010-05-06 (+51d) | 2010-03-24 → 2010-05-20 (+57d) | 7d → 10d |  | 13d → 0d | 27 → 47, 27 |  |
| 57 | Develop developer guide documentation for data type extension | 2010-04-23 → 2010-05-06 (+13d) | 2010-04-26 → 2010-05-20 (+24d) | 2d → 10d |  | 11.5d → 0d | 37 → 47 |  |
| 58 | Prepare developers guide for service developers with ISO 21090 datatypes | 2010-05-03 → 2010-05-06 (+3d) | 2010-05-14 → 2010-05-20 (+6d) |  |  |  |  |  |
| 59 | Prepare user guide | 2010-05-03 → 2010-05-06 (+3d) | 2010-05-14 → 2010-05-20 (+6d) |  |  |  |  |  |
| 60 | Deliver installation and user guide | 2010-05-14 → 2010-05-20 (+6d) | 2010-05-14 → 2010-05-20 (+6d) |  |  |  |  |  |
| 61 | Prepare installation guide | 2010-05-03 → 2010-05-06 (+3d) | 2010-05-14 → 2010-05-20 (+6d) |  |  |  |  |  |

## Version 5 (saved 2010-04-09)

Note of the change: created a new MPP, cut and pasted contents of old into new to correct weird line number issue that Satish created by using a different version of Project than Ye and John ;)

Last finish 2010-05-20 → 2010-05-21 (+1d). Complete tasks 6 → 15.

Added:

| ID | Task | Duration | Start | Finish | Predecessors | Constraint | Resources |
| --- | --- | --- | --- | --- | --- | --- | --- |
| 5 | ISO 21090 Library | 20d | 2010-03-02 A | 2010-03-29 |  | start no earlier than 2010-03-02 |  |
| 51 | **SDK/caGrid Integration** | 5d | 2010-04-27 | 2010-05-03 |  |  |  |
| 52 | Perform SDK and caGrid Integration | 5d | 2010-04-27 | 2010-05-03 | 25 | start no earlier than 2010-04-27 | SDK; caGrid |
| 65 | **Transition** | 4d | 2010-05-18 | 2010-05-21 |  |  |  |
| 66 | Prepare release notes, zope sites | 2d | 2010-05-18 | 2010-05-19 | 56, 61 | start no earlier than 2010-05-18 | SDK; caGrid; caAdapter |
| 67 | Upload artifacts on the public sites | 2d | 2010-05-20 | 2010-05-21 | 66 | start no earlier than 2010-05-20 | SDK; caGrid; caAdapter |

Removed: 4 ISO 21090 Library; 23 Deliver baseline SDK; 47 Deliver SDK and caGrid alpha version; 48 Integration testing and defect fixing; 49 SDK/caGrid Integration; 53 Deliver SDK, caGrid, caAdapter; 54 Provide test support; 56 Develop reference service and limited tutorial

Changed:

| ID | Task | Start | Finish | Duration | Complete | Total float | Predecessors | Other |
| --- | --- | --- | --- | --- | --- | --- | --- | --- |
| 1 | **ISO Datatype support** |  | 2010-05-20 → 2010-05-21 (+1d) | 65.5d → 67d | 33% → 50% |  |  |  |
| 4 | **Implementation** | 2010-02-18 A → 2010-03-02 A (+12d) | 2010-05-06 → 2010-03-29 (-38d) | 55.5d → 20d | 44% → 75% | 10d → 39d |  |  |
| 6 | Analyze COPPA Localized library |  |  |  |  |  |  | constraint none → start no earlier than 2010-03-02 |
| 7 | Analyze COPPA serialization framework |  |  |  |  |  |  | constraint none → start no earlier than 2010-03-02 |
| 8 | Analyze COPPA OR Mapping framework |  |  |  |  |  |  | constraint none → start no earlier than 2010-03-02 |
| 9 | Implement enhancements in datatype library | 2010-03-09 A |  |  | 0% → 50% | 1d → 39d |  | constraint none → start no earlier than 2010-03-09 |
| 10 | Baseline library code |  |  |  |  | 10d → 39d |  | constraint none → start no earlier than 2010-03-29 |
| 12 | **SDK Enhancements** |  | 2010-04-19 → 2010-04-26 (+7d) | 43d → 48d | 49% → 58% | 22.5d → 19d |  |  |
| 13 | Document short term and long term goals for the SDK |  |  |  |  |  |  | constraint none → start no earlier than 2010-02-18 |
| 14 | Create design document for tag value specification |  | 2010-03-22 A |  | 90% → 100% | 41.5d → none |  | constraint none → start no earlier than 2010-03-09 |
| 15 | Create design document for Hibernate mapping |  |  |  |  | 32.5d → 39d |  | constraint none → start no earlier than 2010-03-09 |
| 16 | Develop JAXB based serialization framework |  | 2010-03-29 A |  | 80% → 100% | 24.5d → none |  | constraint none → start no earlier than 2010-03-09 |
| 17 | Create Test UML model |  |  |  |  | 37.5d → 39d |  | constraint none → start no earlier than 2010-03-23 |
| 18 | Enhance SDK Java code generator for the ISO data types |  |  |  |  | 37.5d → 39d |  | constraint none → start no earlier than 2010-03-23 |
| 19 | Enhance SDK ORM module for ISO data types | 2010-03-23 A |  |  | 0% → 80% | 32.5d → 34d |  | constraint none → start no earlier than 2010-03-23 |
| 20 | Enhance SDK service layer to support ISO data types |  |  |  | 50% → 60% | 3.5d → 0d |  | constraint none → start no earlier than 2010-03-09 |
| 21 | Integrate ISO 21090 library in JAXB serialization | 2010-03-30 A |  |  | 0% → 50% | 24.5d → 26d |  | constraint none → start no earlier than 2010-03-30 |
| 22 | Enhance SDK proxy framework for ISO data types |  |  |  |  | 24.5d → 26d |  | constraint none → start no earlier than 2010-04-09 |
| 23 | Enhance SDK RESTful query translator for ISO data types |  | 2010-04-12 → 2010-04-19 (+7d) | 10d → 15d |  | 27.5d → 24d |  | constraint none → start no earlier than 2010-03-30 |
| 24 | Enhance BDA scripts for packaging and deployment |  | 2010-04-12 → 2010-04-19 (+7d) | 10d → 15d |  | 3.5d → 0d |  | constraint none → start no earlier than 2010-03-30 |
| 25 | Unit test and defect fix | 2010-04-13 → 2010-04-20 (+7d) | 2010-04-19 → 2010-04-26 (+7d) |  |  | 3.5d → 0d |  | constraint none → start no earlier than 2010-04-20 |
| 27 | **caAdapter Enhancements** |  | 2010-04-19 → 2010-04-21 (+2d) | 35d → 37d | 43% → 60% | 22.5d → 22d |  |  |
| 28 | Document the short and long term scope of the caAdapter efforts |  |  |  |  |  |  | constraint none → start no earlier than 2010-03-02 |
| 29 | Enhance caAdapter to load ISO 21090 information |  | 2010-03-22 A |  | 80% → 100% | 42.5d → none |  | constraint none → start no earlier than 2010-03-09 |
| 30 | Create template model |  | 2010-03-22 A |  | 80% → 100% | 22.5d → none |  | constraint none → start no earlier than 2010-03-16 |
| 31 | Enhance caAdapter Model Mapping Service | 2010-03-23 A | 2010-04-12 → 2010-04-14 (+2d) | 15d → 17d | 0% → 30% | 22.5d → 22d |  | constraint none → start no earlier than 2010-03-23 |
| 32 | Unit test and defect fix | 2010-04-13 → 2010-04-15 (+2d) | 2010-04-19 → 2010-04-21 (+2d) |  |  | 22.5d → 22d |  | constraint none → start no earlier than 2010-04-15 |
| 33 | Deliver baseline caAdapter | 2010-04-19 → 2010-04-21 (+2d) | 2010-04-19 → 2010-04-21 (+2d) |  |  | 22.5d → 22d |  | constraint none → start no earlier than 2010-02-18 |
| 35 | **caGrid Enhancements** |  | 2010-04-23 → 2010-04-21 (-2d) | 38.5d → 37d | 35% → 67% | 19d → 22d |  |  |
| 36 | Document the short and long term scope of the caGrid efforts |  |  |  |  |  |  | constraint none → start no earlier than 2010-03-02 |
| 37 | Create design document for ISO Introduce Extension |  | 2010-03-12 A |  | 80% → 100% | 44.9d → none |  | constraint none → start no earlier than 2010-03-09 |
| 38 | Create Introduce data types extension for adding ISODatatypes to a service |  | 2010-03-19 A |  | 60% → 100% | 41.9d → none |  | constraint none → start no earlier than 2010-03-15 |
| 39 | Create Service Development Process Documentation for ISO datatypes |  |  |  |  | 40.7d → 43d |  | constraint none → start no earlier than 2010-03-22 |
| 40 | Develop UI component for Introduce data types extension for adding ISODatatypes to a service |  | 2010-03-25 A |  | 60% → 100% | 39.5d → none |  | constraint none → start no earlier than 2010-03-24 |
| 41 | Review SDK database/usertype approach |  | 2010-03-31 A |  | 50% → 100% | 0d → none |  | constraint none → start no earlier than 2010-03-30 |
| 42 | Design CQL to HQL general approach for SDK managed ISO datatypes |  | 2010-04-14 A |  | 20% → 100% | 25.5d → none |  | constraint none → start no earlier than 2010-04-01 |
| 43 | Prototype SDK/caGrid query exchange | 2010-04-01 A |  |  | 0% → 25% | 0d → 22d |  | constraint none → start no earlier than 2010-04-01 |
| 44 | Make ISO client libraries available via download (e.g. any specialized data service client libraries, etc) | 2010-04-15 → 2010-04-01 (-14d) | 2010-04-15 → 2010-04-01 (-14d) |  |  | 0d → 30.5d | 43 → 41 | constraint none → start no earlier than 2010-04-01 |
| 45 | Upload ISO datatype extension to Introduce Update Site | 2010-04-15 → 2010-04-01 (-14d) | 2010-04-15 → 2010-04-01 (-14d) |  |  | 0d → 30.5d |  | constraint none → start no earlier than 2010-04-01 |
| 46 | Upload ISO datatype data service extension/style to Introduce Update Site | 2010-04-16 → 2010-04-02 (-14d) | 2010-04-16 → 2010-04-02 (-14d) |  |  | 0d → 30.5d |  | constraint none → start no earlier than 2010-04-02 |
| 47 | Ivyify retrieval of dependency on common project | 2010-04-16 → 2010-04-02 (-14d) | 2010-04-19 → 2010-04-05 (-14d) |  |  | 23d → 34.5d |  | constraint none → start no earlier than 2010-04-02 |
| 48 | Unit test and defect fix | 2010-04-16 → 2010-04-15 (-1d) | 2010-04-23 → 2010-04-21 (-2d) |  |  | 0d → 22d | 46 → 46, 43 | constraint none → start no earlier than 2010-04-15 |
| 49 | Deliver baseline caGrid components | 2010-04-23 → 2010-04-21 (-2d) | 2010-04-23 → 2010-04-21 (-2d) |  |  | 0d → 22d |  | constraint none → start no earlier than 2010-04-21 |
| 54 | **QA Testing** | 2010-03-30 → 2010-04-20 (+21d) | 2010-05-20 → 2010-05-17 (-3d) | 37.5d → 20d |  |  |  |  |
| 55 | Prepare test plan | 2010-03-30 → 2010-04-20 (+21d) | 2010-04-12 → 2010-05-03 (+21d) |  |  | 27.5d → 0d | 10 → 52SS-5d | constraint none → start no earlier than 2010-04-20 |
| 56 | Execute test cases | 2010-05-06 → 2010-05-04 (-2d) | 2010-05-20 → 2010-05-17 (-3d) |  |  |  | Deliver SDK and caGrid alpha version → 55, 52 | constraint none → start no earlier than 2010-05-04 |
| 58 | **User Documentation** | 2010-05-06 → 2010-05-04 (-2d) | 2010-05-20 → 2010-05-17 (-3d) |  |  |  |  |  |
| 59 | Prepare user guide | 2010-05-06 → 2010-05-04 (-2d) | 2010-05-20 → 2010-05-17 (-3d) |  |  |  | Deliver SDK and caGrid alpha version → 52 | constraint none → start no earlier than 2010-05-04 |
| 60 | Prepare installation guide | 2010-05-06 → 2010-05-04 (-2d) | 2010-05-20 → 2010-05-17 (-3d) |  |  |  | Deliver SDK and caGrid alpha version → 52 | constraint none → start no earlier than 2010-05-04 |
| 61 | Deliver installation and user guide | 2010-05-20 → 2010-05-17 (-3d) | 2010-05-20 → 2010-05-17 (-3d) |  |  |  |  | constraint none → start no earlier than 2010-05-17 |
| 62 | Prepare developers guide for service developers with ISO 21090 datatypes | 2010-05-06 → 2010-05-04 (-2d) | 2010-05-20 → 2010-05-17 (-3d) |  |  | 0d → 4d | Deliver SDK and caGrid alpha version → 52 | constraint none → start no earlier than 2010-05-04 |
| 63 | Develop developer guide documentation for data type extension | 2010-05-06 → 2010-05-04 (-2d) | 2010-05-20 → 2010-05-17 (-3d) |  |  | 0d → 4d | Deliver SDK and caGrid alpha version → 52 | constraint none → start no earlier than 2010-05-04 |

## Version 6 (saved 2010-04-16)

Note of the change: update status on QA and caAdapter

Last finish stays 2010-05-21.

Changed:

| ID | Task | Start | Complete | Total float |
| --- | --- | --- | --- | --- |
| 1 | **ISO Datatype support** |  | 50% → 53% |  |
| 27 | **caAdapter Enhancements** |  | 60% → 82% |  |
| 31 | Enhance caAdapter Model Mapping Service |  | 30% → 80% | 22d → 23d |
| 32 | Unit test and defect fix | 2010-04-15 A | 0% → 20% |  |
| 54 | **QA Testing** | 2010-04-20 A | 0% → 5% |  |
| 55 | Prepare test plan | 2010-04-20 A | 0% → 10% |  |

## Version 7 (saved 2010-04-22)

Note of the change: update status for sdk, caadapter and QA on 4/22

Last finish stays 2010-05-21. Complete tasks 15 → 17.

Changed:

| ID | Task | Start | Finish | Complete | Total float |
| --- | --- | --- | --- | --- | --- |
| 1 | **ISO Datatype support** |  |  | 53% → 63% |  |
| 12 | **SDK Enhancements** |  |  | 58% → 78% |  |
| 17 | Create Test UML model |  | 2010-03-29 A | 80% → 100% | 39d → none |
| 18 | Enhance SDK Java code generator for the ISO data types |  | 2010-03-29 A | 80% → 100% | 39d → none |
| 19 | Enhance SDK ORM module for ISO data types |  |  | 80% → 90% |  |
| 20 | Enhance SDK service layer to support ISO data types |  |  | 60% → 80% | 0d → 12.5d |
| 21 | Integrate ISO 21090 library in JAXB serialization |  |  | 50% → 90% | 26d → 30.5d |
| 22 | Enhance SDK proxy framework for ISO data types | 2010-04-09 A |  | 0% → 90% |  |
| 24 | Enhance BDA scripts for packaging and deployment | 2010-03-30 A |  | 0% → 70% | 0d → 2d |
| 25 | Unit test and defect fix | 2010-04-20 A |  | 0% → 40% |  |
| 27 | **caAdapter Enhancements** |  |  | 82% → 94% |  |
| 31 | Enhance caAdapter Model Mapping Service |  |  | 80% → 90% | 23d → 26d |
| 32 | Unit test and defect fix |  |  | 20% → 80% |  |
| 54 | **QA Testing** |  |  | 5% → 25% |  |
| 55 | Prepare test plan |  |  | 10% → 50% |  |

## Version 8 (saved 2010-04-28)

Note of the change: updated to include external caGrid task plan

Last finish stays 2010-05-21. Complete tasks 17 → 11.

Added:

| ID | Task | Duration | Start | Finish |
| --- | --- | --- | --- | --- |
| 35 | caGrid_HighLevel_TaskPlan_ISO_Datatype | 42.8d? | 2010-03-02 A | 2010-04-29 |

Removed: 35 caGrid Enhancements; 36 Document the short and long term scope of the caGrid efforts; 37 Create design document for ISO Introduce Extension; 38 Create Introduce data types extension for adding ISODatatypes to a service; 39 Create Service Development Process Documentation for ISO datatypes; 40 Develop UI component for Introduce data types extension for adding ISODatatypes to a service; 41 Review SDK database/usertype approach; 42 Design CQL to HQL general approach for SDK managed ISO datatypes; 43 Prototype SDK/caGrid query exchange; 44 Make ISO client libraries available via download (e.g. any specialized data service client libraries, etc); 45 Upload ISO datatype extension to Introduce Update Site; 46 Upload ISO datatype data service extension/style to Introduce Update Site; 47 Ivyify retrieval of dependency on common project; 48 Unit test and defect fix; 49 Deliver baseline caGrid components

Changed:

| ID | Task | Finish | Duration | Complete | Total float |
| --- | --- | --- | --- | --- | --- |
| 1 | **ISO Datatype support** |  | 67d → 67d? | 63% → 66% |  |
| 27 | **caAdapter Enhancements** | 2010-04-21 → 2010-04-29 (+8d) | 37d → 42.8d? | 94% → 92% | 22d → 16.2d |

## Version 9 (saved 2010-04-30)

Note of the change: updated for QA and caAdapter

Last finish 2010-05-21 → 2010-06-14 (+24d). Complete tasks 11 → 13.

Added:

| ID | Task | Duration | Start | Finish | Predecessors |
| --- | --- | --- | --- | --- | --- |
| 33 | caAdapter iteration #2 | 5d | 2010-04-29 | 2010-05-05 | 32 |
| 44 | Exceute test cases iteration #2 | 10d | 2010-05-18 | 2010-05-31 | 43 |
| 45 | Execute test cases iteration #3 | 10d | 2010-06-01 | 2010-06-14 | 44 |

Changed:

| ID | Task | Start | Finish | Duration | Complete | Total float | Predecessors | Other |
| --- | --- | --- | --- | --- | --- | --- | --- | --- |
| 1 | **ISO Datatype support** |  | 2010-05-21 → 2010-06-14 (+24d) | 67d? → 83d? | 66% → 65% |  |  |  |
| 12 | **SDK Enhancements** |  |  |  | 78% → 82% | 19d → 35d |  |  |
| 20 | Enhance SDK service layer to support ISO data types |  |  |  | 80% → 90% | 12.5d → 16.5d |  |  |
| 24 | Enhance BDA scripts for packaging and deployment |  |  |  | 70% → 90% | 2d → 3d |  |  |
| 25 | Unit test and defect fix |  |  |  | 40% → 60% |  |  |  |
| 27 | **caAdapter Enhancements** |  | 2010-04-29 → 2010-05-05 (+6d) | 42.8d? → 47d? | 92% → 90% | 16.2d → 28d |  |  |
| 31 | Enhance caAdapter Model Mapping Service |  | 2010-04-14 A |  | 90% → 100% | 26d → none |  |  |
| 32 | Unit test and defect fix |  | 2010-04-21 → 2010-04-28 A (+7d) | 5d → 10d | 80% → 100% | 22d → none |  |  |
| 34 | Deliver baseline caAdapter | 2010-04-21 → 2010-05-05 (+14d) | 2010-04-21 → 2010-05-05 (+14d) |  |  | 22d → 28d | 32 → 33 |  |
| 41 | **QA Testing** |  | 2010-05-17 → 2010-06-14 (+28d) | 20d → 40d | 25% → 19% |  |  |  |
| 42 | Prepare test plan |  |  |  | 50% → 75% |  |  |  |
| 43 | Execute test cases iteration #1 |  |  |  |  |  |  | was named Execute test cases |

## Version 10 (saved 2010-05-07)

Note of the change: Updated SDK status

Last finish 2010-06-14 → 2010-06-08 (-6d). Complete tasks 13 → 20.

Added:

| ID | Task | Duration | Start | Finish | Predecessors |
| --- | --- | --- | --- | --- | --- |
| 34 | caAdapter iteration #3 | 10d | 2010-05-06 | 2010-05-19 | 33 |
| 35 | caAdapter Documentation | 10d | 2010-05-06 | 2010-05-19 | 33 |
| 46 | SDK #1 | 10d | 2010-05-04 A | 2010-05-17 | 44, 41 |
| 47 | caAdapter #2 | 5d | 2010-05-04 A | 2010-05-10 | 44, 41 |
| 48 | caGRID AS #1 | 10d | 2010-05-04 A | 2010-05-17 | 44, 41 |
| 49 | caGRID DS #1 | 10d | 2010-05-04 | 2010-05-17 | 44, 41 |
| 51 | SDK #2 | 8d | 2010-05-18 | 2010-05-27 | 46 |
| 52 | caAdapter #3 | 5d | 2010-05-18 | 2010-05-24 | 47 |
| 53 | caGRID AS #2 | 8d | 2010-05-18 | 2010-05-27 | 48 |
| 54 | caGRID DS #2 | 8d | 2010-05-18 | 2010-05-27 | 49 |
| 56 | SDK #3 | 8d | 2010-05-28 | 2010-06-08 | 51 |
| 57 | caGRID AS #3 | 8d | 2010-05-28 | 2010-06-08 | 53 |
| 58 | caGRID DS #3 | 8d | 2010-05-28 | 2010-06-08 | 54 |

Changed:

| ID | Task | Start | Finish | Duration | Complete | Total float | Predecessors | Other |
| --- | --- | --- | --- | --- | --- | --- | --- | --- |
| 1 | **ISO Datatype support** |  | 2010-06-14 → 2010-06-08 (-6d) | 83d? → 79d? | 65% → 62% |  |  |  |
| 4 | **Implementation** |  |  |  | 75% → 95% | 55d → 51d |  |  |
| 5 | **ISO 21090 Library** |  |  |  | 75% → 95% | 39d → 51d |  | constraint start no earlier than 2010-03-02 → none |
| 9 | Implement enhancements in datatype library |  |  |  | 50% → 90% | 39d → 0d |  |  |
| 10 | Baseline library code | 2010-03-29 A |  |  | 0% → 90% | 39d → 51d |  |  |
| 12 | **SDK Enhancements** |  | 2010-04-26 → 2010-05-17 (+21d) | 48d → 63d | 82% → 93% | 35d → 16d |  |  |
| 15 | Create design document for Hibernate mapping |  | 2010-03-29 A |  | 90% → 100% | 39d → none |  |  |
| 19 | Enhance SDK ORM module for ISO data types |  | 2010-04-05 A |  | 90% → 100% | 34d → none |  |  |
| 20 | Enhance SDK service layer to support ISO data types |  | 2010-03-29 A |  | 90% → 100% | 16.5d → none |  |  |
| 21 | Integrate ISO 21090 library in JAXB serialization |  | 2010-04-08 A |  | 90% → 100% | 30.5d → none |  |  |
| 22 | Enhance SDK proxy framework for ISO data types |  | 2010-04-15 A |  | 90% → 100% | 26d → none |  |  |
| 23 | Enhance BDA scripts for packaging and deployment |  | 2010-04-19 A |  | 90% → 100% | 3d → none |  |  |
| 24 | Unit test and defect fix |  |  |  | 60% → 90% | 0d → 2.5d |  |  |
| 25 | Enhance SDK RESTful query translator for ISO data types | 2010-03-30 → 2010-05-04 A (+35d) | 2010-04-19 → 2010-05-17 (+28d) | 15d → 10d | 0% → 20% | 24d → 16d | 20 → 24 |  |
| 27 | **caAdapter Enhancements** |  | 2010-05-05 → 2010-05-19 (+14d) | 47d? → 57d? | 90% → 79% | 28d → 14d |  |  |
| 33 | caAdapter iteration #2 | 2010-04-29 A | 2010-05-05 A |  | 0% → 100% | 28d → none |  |  |
| 36 | Deliver baseline caAdapter | 2010-05-05 → 2010-05-19 (+14d) | 2010-05-05 → 2010-05-19 (+14d) |  |  | 28d → 14d | 33 → 35 |  |
| 40 | **SDK/caGrid Integration** | 2010-04-27 A |  |  | 0% → 50% |  |  |  |
| 41 | Perform SDK and caGrid Integration | 2010-04-27 A |  |  | 0% → 50% |  |  |  |
| 43 | **QA Testing** |  | 2010-06-14 → 2010-06-08 (-6d) | 40d → 36d | 19% → 18% |  |  |  |
| 45 | **Execute test cases iteration #1** | 2010-05-04 A |  |  | 0% → 30% | 0d → 11d |  | constraint start no earlier than 2010-05-04 → none |
| 50 | **Exceute test cases iteration #2** |  | 2010-05-31 → 2010-05-27 (-4d) | 10d → 8d |  |  | 45 → 49 |  |
| 55 | **Execute test cases iteration #3** | 2010-06-01 → 2010-05-28 (-4d) | 2010-06-14 → 2010-06-08 (-6d) | 10d → 8d |  |  | 50 → none |  |

## Version 11 (saved 2010-05-14)

Note of the change: updated status for SDK and ISO common project, adjusted dependencies

Last finish 2010-06-08 → 2010-06-17 (+9d). Complete tasks 20 → 24.

Changed:

| ID | Task | Start | Finish | Duration | Complete | Total float | Predecessors |
| --- | --- | --- | --- | --- | --- | --- | --- |
| 1 | **ISO Datatype support** |  | 2010-06-08 → 2010-06-17 (+9d) | 79d? → 86d? | 62% → 59% |  |  |
| 4 | **Implementation** | 2010-03-02 A → 2010-02-18 A (-12d) | 2010-03-29 → 2010-05-19 (+51d) | 20d → 65d? | 95% → 88% | 51d → 21d |  |
| 5 | **ISO 21090 Library** |  | 2010-03-29 A |  | 95% → 100% | 51d → none |  |
| 9 | Implement enhancements in datatype library |  | 2010-03-29 A |  | 90% → 100% | 0d → none |  |
| 10 | Baseline library code |  | 2010-03-29 A |  | 90% → 100% | 51d → none |  |
| 12 | **SDK Enhancements** |  |  |  | 93% → 96% | 16d → 23d |  |
| 24 | Unit test and defect fix |  | 2010-04-26 A |  | 90% → 100% | 2.5d → none |  |
| 25 | Enhance SDK RESTful query translator for ISO data types |  |  |  | 20% → 50% | 16d → 23d |  |
| 27 | **caAdapter Enhancements** |  |  | 57d? → 57d | 79% → 72% | 14d → 21d |  |
| 38 | caGrid_HighLevel_TaskPlan_ISO_Datatype |  | 2010-04-29 → 2010-05-18 (+19d) | 42.8d? → 55.05d? | 90% → 82% | 28.2d → 22.95d |  |
| 40 | **SDK/caGrid Integration** |  | 2010-05-03 A |  | 50% → 100% | 0d → none |  |
| 41 | Perform SDK and caGrid Integration |  | 2010-05-03 A |  | 50% → 100% | 0d → none |  |
| 43 | **QA Testing** |  | 2010-06-08 → 2010-06-11 (+3d) | 36d → 39d | 18% → 25% |  |  |
| 45 | **Execute test cases iteration #1** |  | 2010-05-17 → 2010-05-20 (+3d) | 10d → 13d | 30% → 47% |  |  |
| 46 | SDK #1 |  |  |  | 40% → 80% | 0d → 3d |  |
| 47 | caAdapter #2 |  |  |  | 30% → 80% | 16d → 19d |  |
| 49 | caGRID DS #1 | 2010-05-04 A | 2010-05-17 → 2010-05-20 (+3d) | 10d → 13d | 0% → 8% |  |  |
| 50 | **Exceute test cases iteration #2** | 2010-05-18 → 2010-05-21 (+3d) | 2010-05-27 → 2010-06-01 (+5d) |  |  |  |  |
| 51 | SDK #2 | 2010-05-18 → 2010-05-21 (+3d) | 2010-05-27 → 2010-06-01 (+5d) |  |  |  |  |
| 52 | caAdapter #3 | 2010-05-18 → 2010-05-21 (+3d) | 2010-05-24 → 2010-05-27 (+3d) |  |  |  |  |
| 53 | caGRID AS #2 | 2010-05-18 → 2010-05-21 (+3d) | 2010-05-27 → 2010-06-01 (+5d) |  |  |  |  |
| 54 | caGRID DS #2 | 2010-05-18 → 2010-05-21 (+3d) | 2010-05-27 → 2010-06-01 (+5d) |  |  |  |  |
| 55 | **Execute test cases iteration #3** | 2010-05-28 → 2010-06-02 (+5d) | 2010-06-08 → 2010-06-11 (+3d) |  |  |  |  |
| 56 | SDK #3 | 2010-05-28 → 2010-06-02 (+5d) | 2010-06-08 → 2010-06-11 (+3d) |  |  |  |  |
| 57 | caGRID AS #3 | 2010-05-28 → 2010-06-02 (+5d) | 2010-06-08 → 2010-06-11 (+3d) |  |  |  |  |
| 58 | caGRID DS #3 | 2010-05-28 → 2010-06-02 (+5d) | 2010-06-08 → 2010-06-11 (+3d) |  |  |  |  |
| 60 | **User Documentation** |  | 2010-05-17 → 2010-05-31 (+14d) | 10d → 20d |  | 12d → 9d |  |
| 61 | Prepare user guide |  | 2010-05-17 → 2010-05-31 (+14d) | 10d → 20d |  | 12d → 9d |  |
| 62 | Prepare installation guide |  | 2010-05-17 → 2010-05-31 (+14d) | 10d → 20d |  | 12d → 9d |  |
| 63 | Deliver installation and user guide | 2010-05-17 → 2010-05-31 (+14d) | 2010-05-17 → 2010-05-31 (+14d) |  |  | 12d → 9d |  |
| 64 | Prepare developers guide for service developers with ISO 21090 datatypes |  | 2010-05-17 → 2010-05-31 (+14d) | 10d → 20d |  | 16d → 13d |  |
| 65 | Develop developer guide documentation for data type extension |  | 2010-05-17 → 2010-05-31 (+14d) | 10d → 20d |  | 16d → 13d |  |
| 67 | **Transition** | 2010-05-18 → 2010-06-14 (+27d) | 2010-05-21 → 2010-06-17 (+27d) |  |  | 12d → 0d |  |
| 68 | Prepare release notes, zope sites | 2010-05-18 → 2010-06-14 (+27d) | 2010-05-19 → 2010-06-15 (+27d) |  |  | 12d → 0d | 45, 63 → 63, 43 |
| 69 | Upload artifacts on the public sites | 2010-05-20 → 2010-06-16 (+27d) | 2010-05-21 → 2010-06-17 (+27d) |  |  | 12d → 0d |  |

## Version 12 (saved 2010-05-20)

Note of the change: updated caGrid and Documentation tasksD

Last finish stays 2010-06-17. Complete tasks 24 → 25.

Added:

| ID | Task | Duration | Start | Finish | Predecessors | Resources |
| --- | --- | --- | --- | --- | --- | --- |
| 66 | **Product Specific Guides** | 22d | 2010-04-27 | 2010-05-26 |  |  |
| 67 | caAdapter | 5d | 2010-05-20 | 2010-05-26 | 36 | caAdapter |
| 68 | SDK Workbench | 5d | 2010-04-27 | 2010-05-03 | 24 | SDK |
| 69 | SDK Programmers Guide | 5d | 2010-04-27 | 2010-05-03 | 24 | SDK |
| 70 | caGrid Analytical Service Tutorial | 5d | 2010-05-18 | 2010-05-25 | 38 | caGrid |
| 71 | caGrid Data Service Tutorial | 5d | 2010-05-18 | 2010-05-25 | 38 | caGrid |
| 72 | Finish | 0d | 2010-05-26 | 2010-05-26 | 63, 64, 65, 67, 68, 69, 70, 71 |  |

Changed:

| ID | Task | Start | Finish | Duration | Complete | Total float | Predecessors | Other |
| --- | --- | --- | --- | --- | --- | --- | --- | --- |
| 1 | **ISO Datatype support** |  |  |  | 59% → 67% |  |  |  |
| 4 | **Implementation** |  |  |  | 88% → 91% |  |  |  |
| 38 | caGrid_HighLevel_TaskPlan_ISO_Datatype |  |  |  | 82% → 99% | 22.95d → 0d |  |  |
| 60 | **User Documentation** | 2010-05-04 → 2010-04-09 A (-25d) | 2010-05-31 → 2010-05-26 (-5d) | 20d → 34d |  | 9d → 16d |  |  |
| 61 | Start | 2010-05-04 → 2010-04-09 A (-25d) | 2010-05-31 → 2010-04-09 A (-52d) | 20d → 0d | 0% → 100% | 9d → none | 41 → none | was named Prepare user guide; constraint start no earlier than 2010-05-04 → none; resources SDK; caGrid; caAdapter → none |
| 62 | **Non-Product Specific Guides** | 2010-05-04 → 2010-04-09 (-25d) | 2010-05-31 → 2010-04-15 (-46d) | 20d → 5d |  | 9d → 41d | 41 → none | was named Prepare installation guide; constraint start no earlier than 2010-05-04 → none; resources SDK; caGrid; caAdapter → none |
| 63 | ISO Common Project Overview | 2010-05-31 → 2010-04-09 (-52d) | 2010-05-31 → 2010-04-15 (-46d) | 0d → 5d |  | 9d → 41d | 61, 62 → 61 | was named Deliver installation and user guide; constraint start no earlier than 2010-05-17 → none; resources none → Documentation |
| 64 | Example Use Cases/Work Flows | 2010-05-04 → 2010-04-09 (-25d) | 2010-05-31 → 2010-04-15 (-46d) | 20d → 5d |  | 13d → 45d | 41 → 61 | was named Prepare developers guide for service developers with ISO 21090 datatypes; constraint start no earlier than 2010-05-04 → none; resources SDK; caGrid; caAdapter → Documentation |
| 65 | UML Modeling Guide | 2010-05-04 → 2010-04-09 (-25d) | 2010-05-31 → 2010-04-15 (-46d) | 20d → 5d |  | 13d → 45d | 41 → 61 | was named Develop developer guide documentation for data type extension; constraint start no earlier than 2010-05-04 → none; resources caGrid → Documentation |

## Version 13 (saved 2010-05-21)

Note of the change: Updated SDK and documentation schedule

Last finish stays 2010-06-17. Complete tasks 25 → 27.

Added:

| ID | Task | Duration | Start | Finish | Predecessors | Resources |
| --- | --- | --- | --- | --- | --- | --- |
| 26 | SDK internal testing | 10d | 2010-05-18 A | 2010-05-31 | 25 | SDK |

Changed:

| ID | Task | Start | Finish | Duration | Complete | Total float |
| --- | --- | --- | --- | --- | --- | --- |
| 1 | **ISO Datatype support** |  |  |  | 67% → 72% |  |
| 4 | **Implementation** |  | 2010-05-19 → 2010-05-31 (+12d) | 65d? → 73d? | 91% → 90% | 21d → 13d |
| 12 | **SDK Enhancements** |  | 2010-05-17 → 2010-05-31 (+14d) | 63d → 73d | 96% → 92% | 23d → 13d |
| 25 | Enhance SDK RESTful query translator for ISO data types |  |  |  | 50% → 70% |  |
| 45 | **QA Testing** |  |  |  | 25% → 35% |  |
| 47 | **Execute test cases iteration #1** |  |  |  | 47% → 74% | 11d → 0d |
| 49 | caAdapter #2 |  | 2010-05-10 A |  | 80% → 100% | 19d → none |
| 50 | caGRID AS #1 |  | 2010-05-17 A |  | 50% → 100% | 3d → none |
| 51 | caGRID DS #1 |  |  |  | 8% → 40% |  |
| 62 | **User Documentation** |  |  |  | 0% → 39% |  |
| 64 | **Non-Product Specific Guides** | 2010-04-09 A |  |  | 0% → 27% | 41d → 45d |
| 67 | UML Modeling Guide | 2010-04-09 A |  |  | 0% → 80% |  |
| 68 | **Product Specific Guides** | 2010-04-27 A |  |  | 0% → 46% |  |
| 69 | caAdapter | 2010-05-20 A |  |  | 0% → 50% |  |
| 70 | SDK Workbench | 2010-04-27 A |  |  | 0% → 80% |  |
| 71 | SDK Programmers Guide | 2010-04-27 A |  |  | 0% → 25% |  |
| 72 | caGrid Analytical Service Tutorial | 2010-05-18 A |  |  | 0% → 75% |  |

## Version 14 (saved 2010-05-28)

Note of the change: updated documentation tasks for this week

Last finish stays 2010-06-17. Complete tasks 27 → 29.

Changed:

| ID | Task | Start | Finish | Complete | Total float |
| --- | --- | --- | --- | --- | --- |
| 1 | **ISO Datatype support** |  |  | 72% → 75% |  |
| 62 | **User Documentation** |  |  | 39% → 73% |  |
| 64 | **Non-Product Specific Guides** |  |  | 27% → 77% |  |
| 65 | ISO Common Project Overview | 2010-04-09 A |  | 0% → 75% |  |
| 66 | Example Use Cases/Work Flows | 2010-04-09 A |  | 0% → 75% |  |
| 68 | **Product Specific Guides** |  |  | 46% → 71% |  |
| 72 | caGrid Analytical Service Tutorial |  | 2010-05-25 A | 75% → 100% | 17.95d → none |
| 73 | caGrid Data Service Tutorial | 2010-05-18 A | 2010-05-25 A | 0% → 100% | 17.95d → none |
