# caGrid_HighLevel_TaskPlan_ISO_Datatype

How a schedule from MS Project changed from version to version. A marks actual dates.

## Version 1 (saved 2010-04-28)

| ID | WBS | Task | Duration | Start | Finish | Predecessors | Complete | Total float | Constraint |
| --- | --- | --- | --- | --- | --- | --- | --- | --- | --- |
| 1 | 1 | **caGrid Enhancements** | 42.8d? | 2010-03-02 A | 2010-04-29 |  | 90% | 16.2d |  |
| 2 |  | Start | 0d | 2010-03-02 A | 2010-03-02 A |  | 100% |  |  |
| 3 |  | Document Scope | 3d | 2010-03-08 A | 2010-03-10 A | 2 | 100% |  |  |
| 4 | 1.3 | **Analytical services Introduce extension** | 36.8d? | 2010-03-10 A | 2010-04-29 |  | 95% | 16.2d |  |
| 5 |  | Start | 0d | 2010-03-10 A | 2010-03-10 A | 3 | 100% |  |  |
| 6 |  | Create design document for analytical datatypes extension | 3d | 2010-03-10 A | 2010-03-12 A | 5 | 100% |  |  |
| 7 |  | Create Introduce extensions project | 5d | 2010-03-10 A | 2010-03-16 A | 5 | 100% |  |  |
| 8 | 1.3.4 | **Implement Introduce extension** | 10d | 2010-04-15 A | 2010-04-28 A | 7 | 100% |  |  |
| 9 |  | Implement JAXB Serialization | 10d | 2010-04-15 A | 2010-04-28 A |  | 100% |  |  |
| 10 |  | Add postStubs fixes to the ISO Introduce type mapping extension and fix the GUI layout | 5d | 2010-04-15 A | 2010-04-21 A |  | 100% |  |  |
| 11 | 1.3.5 | **Create service development process documentation** | 10.8d? | 2010-04-15 A | 2010-04-29 | 8, 9, 10 | 84% | 16.2d |  |
| 12 |  | Create Docs for ISOAnalytical Extension | 4d | 2010-04-15 A | 2010-04-20 A |  | 100% |  | start no earlier than 2010-04-15 |
| 13 |  | Add analytical service docs to cagrid.org wiki | 1d? | 2010-04-21 A | 2010-04-29 |  | 20% | 16.2d | start no earlier than 2010-04-21 |
| 14 |  | Upload Introduce extension to Introduce update site | 5d | 2010-04-19 A | 2010-04-23 A |  | 100% |  |  |
| 15 |  | Hand off to QA | 1d? | 2010-04-28 | 2010-04-28 |  |  | 0.8d |  |
| 16 |  | Finish | 0d | 2010-04-29 | 2010-04-29 | 6, 7, 8, 11, 14, 15 |  | 16.2d |  |
| 17 | 1.4 | **Data Services ISO 21090 caCORE SDK style** | 36d? | 2010-03-03 A | 2010-04-21 |  | 82% | 22d |  |
| 18 |  | Start | 0d | 2010-03-03 A | 2010-03-03 A | 2 | 100% |  | start no earlier than 2010-03-03 |
| 19 |  | Create design document | 1d? | 2010-04-21 A | 2010-04-21 A | 18 | 100% |  |  |
| 20 |  | Design CQL -> HQL translation | 17d | 2010-03-09 A | 2010-03-31 A |  | 100% |  |  |
| 21 |  | Create project for domain model generation | 1d | 2010-04-21 A | 2010-04-21 A | 20 | 100% |  |  |
| 22 |  | Create project for the CQL -> HQL translation and Introduce style | 1d | 2010-04-21 A | 2010-04-21 A | 20 | 100% |  | start no earlier than 2010-04-21 |
| 23 |  | Implement CQL -> HQL translation | 1d? | 2010-04-21 A | 2010-04-21 | 20 | 25% | 5.8d |  |
| 24 |  | Create ISO 21090 caCORE SDK data services style | 1d? | 2010-04-21 A | 2010-04-21 | 20 | 25% | 5.8d |  |
| 25 |  | Create ISO 21090 Introduce data service creation process user documentation | 1d? | 2010-04-21 | 2010-04-21 | 20 |  | 5.8d | start no earlier than 2010-04-21 |
| 26 |  | Upload style to Introduce update site | 1d? | 2010-03-11 | 2010-03-11 |  |  | 34.8d | start no earlier than 2010-03-11 |
| 27 |  | Hand off to QA | 1d? | 2010-04-21 | 2010-04-21 |  |  | 5.8d | start no earlier than 2010-04-21 |
| 28 |  | Finish | 0d | 2010-04-21 | 2010-04-21 | 21, 22, 23, 24, 25, 26, 27 |  | 5.8d |  |
| 29 |  | Finish | 0d | 2010-04-29 | 2010-04-29 | 16, 28 |  | 16.2d |  |

## Version 2 (saved 2010-05-07)

Last finish stays 2010-04-29. Complete tasks 14 → 18.

Changed:

| ID | Task | Start | Finish | Complete | Total float |
| --- | --- | --- | --- | --- | --- |
| 1 | **caGrid Enhancements** |  |  | 90% → 95% | 16.2d → 0d |
| 4 | **Analytical services Introduce extension** |  | 2010-04-29 A | 95% → 100% | 16.2d → none |
| 11 | **Create service development process documentation** |  | 2010-04-29 A | 84% → 100% | 16.2d → none |
| 13 | Add analytical service docs to cagrid.org wiki |  | 2010-04-29 A | 20% → 100% | 16.2d → none |
| 15 | Hand off to QA | 2010-04-28 A | 2010-04-28 A | 0% → 100% | 0.8d → none |
| 16 | Finish | 2010-04-29 A | 2010-04-29 A | 0% → 100% | 16.2d → none |
| 17 | **Data Services ISO 21090 caCORE SDK style** |  |  | 82% → 87% | 22d → 5.8d |
| 23 | Implement CQL -> HQL translation |  | 2010-04-21 A | 25% → 100% | 5.8d → none |
| 24 | Create ISO 21090 caCORE SDK data services style |  |  | 25% → 75% |  |

## Version 3 (saved 2010-05-13)

Last finish 2010-04-29 → 2010-05-18 (+19d).

Changed:

| ID | Task | Start | Finish | Duration | Complete | Total float | Predecessors | Other |
| --- | --- | --- | --- | --- | --- | --- | --- | --- |
| 1 | **caGrid Enhancements** |  | 2010-04-29 → 2010-05-18 (+19d) | 42.8d? → 55.05d? | 95% → 82% |  |  |  |
| 16 | Finish |  |  |  |  |  |  | resources none → caGrid |
| 17 | **Data Services ISO 21090 caCORE SDK style** |  | 2010-04-21 → 2010-05-18 (+27d) | 36d? → 54.05d? | 87% → 68% | 5.8d → 0d |  | resources none → caGrid |
| 18 | Start |  |  |  |  |  |  | resources none → caGrid |
| 19 | Create design document |  |  |  |  |  |  | resources none → caGrid |
| 20 | Design CQL -> HQL translation |  |  |  |  |  | none → 19 | resources none → caGrid |
| 21 | Create project for domain model generation |  |  |  |  |  |  | resources none → caGrid |
| 22 | Create project for the CQL -> HQL translation and Introduce style |  |  |  |  |  |  | resources none → caGrid |
| 23 | Implement CQL -> HQL translation |  | 2010-04-21 A → 2010-05-04 A (+13d) | 1d? → 10d |  |  |  | resources none → caGrid |
| 24 | Create ISO 21090 caCORE SDK data services style |  | 2010-04-21 → 2010-05-18 (+27d) | 1d? → 10d | 75% → 10% | 5.8d → 0d | 20 → 23 | resources none → caGrid |
| 25 | Create ISO 21090 Introduce data service creation process user documentation |  | 2010-04-21 → 2010-04-23 (+2d) | 1d? → 3d |  | 5.8d → 13.55d |  | resources none → caGrid |
| 26 | Upload style to Introduce update site | 2010-03-11 A | 2010-03-11 → 2010-04-27 (+47d) | 1d? → 2d | 0% → 25% | 34.8d → 13.55d | none → 25 | resources none → caGrid |
| 27 | Hand off to QA | 2010-04-21 → 2010-04-27 (+6d) | 2010-04-21 → 2010-04-28 (+7d) | 1d? → 1d |  | 5.8d → 13.55d | none → 26 | resources none → caGrid |
| 28 | Finish | 2010-04-21 → 2010-05-18 (+27d) | 2010-04-21 → 2010-05-18 (+27d) |  |  | 5.8d → 0d |  | resources none → caGrid |
| 29 | Finish | 2010-04-29 → 2010-05-18 (+19d) | 2010-04-29 → 2010-05-18 (+19d) |  |  |  |  | resources none → caGrid |

## Version 4 (saved 2010-05-20)

Note of the change: updated caGrid and Documentation tasksD

Last finish stays 2010-05-18. Complete tasks 18 → 24.

Changed:

| ID | Task | Start | Finish | Complete | Total float |
| --- | --- | --- | --- | --- | --- |
| 1 | **caGrid Enhancements** |  |  | 82% → 99% |  |
| 17 | **Data Services ISO 21090 caCORE SDK style** |  |  | 68% → 99% |  |
| 24 | Create ISO 21090 caCORE SDK data services style |  | 2010-05-18 A | 10% → 100% | 0d → none |
| 25 | Create ISO 21090 Introduce data service creation process user documentation | 2010-04-21 A | 2010-04-23 A | 0% → 100% | 13.55d → none |
| 26 | Upload style to Introduce update site |  | 2010-04-27 A | 25% → 100% | 13.55d → none |
| 27 | Hand off to QA | 2010-04-27 A | 2010-04-28 A | 0% → 100% | 13.55d → none |
| 28 | Finish | 2010-05-18 A | 2010-05-18 A | 0% → 100% | 0d → none |
| 29 | Finish | 2010-05-18 A | 2010-05-18 A | 0% → 100% | 0d → none |
